# BTC_NangCapCongTTDT_2021_v1.0_19012021

Schedule from MS Project, 2021-02-22 to 2021-08-27, A marks actual dates.

## Calendars

- Standard: Mon-Fri 08:00-12:00, 13:00-17:00; Sat-Sun off.

## Resources

| Resource |
| --- |
| BTC |

## Schedule

| ID | WBS | Task | Duration | Start | Finish | Predecessors | Complete | Remaining | Total slack | Free slack | Constraint | Resources | Work |
| --- | --- | --- | --- | --- | --- | --- | --- | --- | --- | --- | --- | --- | --- |
| 1 | 1 | **Nâng cấp Cổng thông tin điện tử Bộ Tài Chính** | 135d | 2021-02-22 A | 2021-08-27 |  | 46% | 73.51d |  |  |  |  | 400h |
| 2 | 1.1 | **Triển khai dự án** | 130d | 2021-02-22 A | 2021-08-20 |  | 46% | 70.79d | 5d |  |  |  | 400h |
| 3 | 1.1.1 | **Khởi động dự án** | 4d | 2021-02-22 A | 2021-02-25 A |  | 100% |  |  |  |  |  |  |
| 4 | 1.1.1.1 | Xây dựng kế hoạch triển khai | 3d | 2021-02-22 A | 2021-02-24 A |  | 100% |  |  |  | start no earlier than 2021-02-22 |  |  |
| 5 | 1.1.1.2 | Họp kick-off dự án | 1d | 2021-02-25 A | 2021-02-25 A | 4 | 100% |  |  |  |  |  |  |
| 6 | 1.1.2 | **Khảo sát hệ thống** | 15d | 2021-03-01 A | 2021-03-19 A |  | 100% |  |  |  |  |  |  |
| 7 | 1.1.2.1 | Lập kế hoạch khảo sát | 2d | 2021-03-01 A | 2021-03-02 A |  | 100% |  |  |  | start no earlier than 2021-03-01 |  |  |
| 8 | 1.1.2.2 | Xây dựng bộ câu hỏi khảo sát | 3d | 2021-03-03 A | 2021-03-05 A | 7 | 100% |  |  |  |  |  |  |
| 9 | 1.1.2.3 | Tiến hành khảo sát | 5d | 2021-03-08 A | 2021-03-12 A |  | 100% |  |  |  | start no earlier than 2021-03-08 |  |  |
| 10 | 1.1.2.4 | Xây dựng báo cáo khảo sát | 5d | 2021-03-15 A | 2021-03-19 A | 9 | 100% |  |  |  |  |  |  |
| 11 | 1.1.3 | **Phân tích thiết kế hệ thống** | 15d | 2021-03-22 A | 2021-04-09 |  | 69% | 4.69d | 100d |  |  |  | 80h |
| 12 | 1.1.3.1 | Xây dựng tài liệu đặc tả yêu cầu NSD | 5d | 2021-03-22 A | 2021-03-26 A | 10 | 100% |  |  |  |  |  |  |
| 13 | 1.1.3.2 | Xây dựng tài liệu thiết kế hệ thống | 3d | 2021-03-22 A | 2021-03-24 A | 10 | 100% |  |  |  |  |  |  |
| 14 | 1.1.3.3 | Xây dựng tài liệu thiết kế CSDL | 2d | 2021-03-22 A | 2021-03-23 A | 10 | 100% |  |  |  |  |  |  |
| 15 | 1.1.3.4 | Xây dựng mô hình triển khai nền tảng hạ tầng | 2d | 2021-03-22 A | 2021-03-23 A | 10 | 100% |  |  |  |  |  |  |
| 16 | 1.1.3.5 | Xây dựng kế hoạch và kịch bản triển khai nền tảng hạ tầng | 3d | 2021-03-22 A | 2021-03-24 A | 10 | 100% |  |  |  |  |  |  |
| 17 | 1.1.3.6 | Xây dựng kế hoạch kiểm thử | 2d | 2021-03-22 A | 2021-03-23 A | 10 | 100% |  |  |  |  |  |  |
| 18 | 1.1.3.7 | Xây dựng bộ test-case kiểm thử hệ thống | 5d | 2021-03-22 A | 2021-03-26 A | 10 | 100% |  |  |  |  |  |  |
| 19 | 1.1.3.8 | Phê duyệt bộ tài liệu khảo sát và phân tích thiết kế | 10d | 2021-03-29 | 2021-04-09 | 12 |  |  | 100d |  |  | BTC | 80h |
| 20 | 1.1.4 | **Phát triển nâng cấp hệ thống** | 53d | 2021-03-22 A | 2021-06-02 |  | 74% | 13.73d | 62d |  |  |  |  |
| 21 | 1.1.4.1 | **Lập trình version 1.0** | 30d | 2021-03-22 A | 2021-04-30 | 10 | 75% | 7.5d |  |  |  |  |  |
| 22 | 1.1.4.1.1 | Xây dựng cổng | 30d | 2021-03-22 A | 2021-04-30 |  | 40% | 18d | 0d |  |  |  |  |
| 23 | 1.1.4.1.2 | Nâng cấp ACMS | 30d | 2021-03-22 A | 2021-04-30 |  | 90% | 3d | 0d |  |  |  |  |
| 24 | 1.1.4.1.3 | Nâng cấp AppUtils | 30d | 2021-03-22 A | 2021-04-30 |  | 90% | 3d | 0d |  |  |  |  |
| 25 | 1.1.4.1.4 | Api cho mobile | 30d | 2021-03-22 A | 2021-04-30 |  | 80% | 6d | 0d |  |  |  |  |
| 26 | 1.1.4.2 | Kiểm thử version 1.0 | 30d | 2021-03-22 A | 2021-04-30 | 10 | 90% | 3d | 15d | 0d |  |  |  |
| 27 | 1.1.4.3 | Fix lỗi và hoàn thiện | 20d | 2021-05-03 A | 2021-05-28 | 26 | 80% | 4d | 65d |  |  |  |  |
| 28 | 1.1.4.4 | Kiểm thử sau khi fix lỗi và hoàn thiện | 20d | 2021-05-03 A | 2021-05-28 | 26 | 50% | 10d | 5d | 0d |  |  |  |
| 29 | 1.1.4.5 | Nghiệm thu nội bộ và release phiên bản UAT | 3d | 2021-05-31 | 2021-06-02 | 28 |  |  | 62d |  |  |  |  |

| ID | WBS | Task | Type | Duration | Start | Finish | Predecessors | Total slack | Free slack | Resources | Work |
| --- | --- | --- | --- | --- | --- | --- | --- | --- | --- | --- | --- |
| 30 | 1.1.5 | **Cài đặt, triển khai thử nghiệm hệ thống** |  | 45d | 2021-05-31 | 2021-07-30 |  | 5d |  |  | 240h |
| 31 | 1.1.5.1 | Xây dựng các tài liệu cài đặt, báo cáo thử nghiệm hệ thống |  | 5d | 2021-05-31 | 2021-06-04 | 28 | 5d | 0d |  |  |
| 32 | 1.1.5.2 | Cài đặt hệ thống trên môi trường BTC |  | 5d | 2021-06-07 | 2021-06-11 | 31 | 55d |  |  |  |
| 33 | 1.1.5.3 | Chuyển đổi dữ liệu hệ thống |  | 10d | 2021-06-07 | 2021-06-18 | 31 | 5d | 0d |  |  |
| 34 | 1.1.5.4 | Kiểm thử dữ liệu chuyển đổi tại BTC | manual | 10d | 2021-06-21 | 2021-07-02 | 33 |  |  |  |  |
| 35 | 1.1.5.5 | Kiểm thử chức năng hệ thống trên môi trường BTC |  | 20d | 2021-06-21 | 2021-07-16 | 33 | 30d |  |  |  |
| 36 | 1.1.5.6 | Đánh giá bảo mật và hiệu năng hệ thống |  | 20d | 2021-06-21 | 2021-07-16 | 33 | 30d |  | BTC | 160h |
| 37 | 1.1.5.7 | Fix các lỗi phát sinh trong quá trình kiểm thử và release phiên bản đào tạo |  | 20d | 2021-06-21 | 2021-07-16 | 33 | 20d | 0d |  |  |
| 38 | 1.1.5.8 | Phê duyệt các tài liệu nghiệm thu UAT |  | 10d | 2021-07-19 | 2021-07-30 | 37 | 20d |  | BTC | 80h |
| 39 | 1.1.6 | **Đào tạo và chuyển giao công nghệ** |  | 25d | 2021-06-21 | 2021-07-23 |  | 5d |  |  | 80h |
| 40 | 1.1.6.1 | Xây dựng tài liệu đào tạo, HDSD và chuyển giao công nghệ |  | 5d | 2021-06-21 | 2021-06-25 | 33 | 5d | 0d |  |  |
| 41 | 1.1.6.2 | Đào tạo người dùng biên tập |  | 5d | 2021-07-19 | 2021-07-23 | 37 | 25d |  |  |  |
| 42 | 1.1.6.3 | Đào tạo quản trị hệ thống |  | 5d | 2021-06-28 | 2021-07-02 | 40 | 5d | 0d |  |  |
| 43 | 1.1.6.4 | Fix các lỗi phát sinh trong quá trình đào tạo người dùng và release phiên bản sẵn sàng golive |  | 10d | 2021-07-05 | 2021-07-16 | 42 | 5d | 0d |  |  |
| 44 | 1.1.6.5 | Nghiệm thu đào tạo |  | 10d | 2021-07-05 | 2021-07-16 | 42 | 30d |  | BTC | 80h |
| 45 | 1.1.7 | Bàn giao, nghiệm thu hệ thống nâng cấp |  | 25d | 2021-07-19 | 2021-08-20 | 43 | 5d |  |  |  |

Notes:
- 30: Task nŕy có thể triển khai sớm hơn
